# 硅酸铝钠&长石1:1复配

Schedule from a web Gantt chart, 2024-07-03 to 2024-07-03.
Every day is a working day

## Schedule

| ID | WBS | Task | Duration | Start | Finish |
| --- | --- | --- | --- | --- | --- |
| 2 | 1 | **硅酸铝钠&长石1:1工艺稳定性提升** | 1d | 2024-07-03 | 2024-07-03 |
| 3 | 1.1 | **硅酸铝钠&长石1:1样块烧结** | 1d | 2024-07-03 | 2024-07-03 |
| 4 | 1.1.1 | 硅酸铝钠&长石1:1样块920℃烧结 | 1d | 2024-07-03 | 2024-07-03 |
| 5 | 1.1.2 | 硅酸铝钠&长石1:1样块930℃烧结 | 1d | 2024-07-03 | 2024-07-03 |
| 6 | 1.2 | 硅酸铝钠&长石1:1样块改性 | 1d | 2024-07-03 | 2024-07-03 |
| 7 | 1.3 | **硅酸铝钠&长石1:1树脂渗透** | 1d | 2024-07-03 | 2024-07-03 |
| 8 | 1.3.1 | 硅酸铝钠&长石1:1样块3:4:3树脂渗透 | 1d | 2024-07-03 | 2024-07-03 |
| 9 | 1.3.2 | 硅酸铝钠&长石1:1样块3:4:3树脂渗透 | 1d | 2024-07-03 | 2024-07-03 |
| 10 | 1.4 | 硅酸铝钠&长石1:1样块固化 | 1d | 2024-07-03 | 2024-07-03 |
